# Proyecto Fin de Carrera10102009SofíaSilva

Schedule from MS Project, 2009-08-12 to 2010-03-15, A marks actual dates.

## Calendars

- Estándar: Mon-Fri 09:00-13:00, 15:00-19:00; Sat-Sun off.

## Resources

| Resource |
| --- |
| Juan Brenes |
| Sofia Silva |

## Schedule

| ID | WBS | Task | Type | Duration | Start | Finish | Predecessors | Complete | Remaining | Total slack | Constraint | Deadline | Resources | Work | Actual work |
| --- | --- | --- | --- | --- | --- | --- | --- | --- | --- | --- | --- | --- | --- | --- | --- |
| 1 | 1 | Definición del tema |  | 10d? | 2009-08-12 A | 2009-08-25 A |  | 100% |  |  | must finish on 2009-08-25 | 2009-08-25 | Juan Brenes; Sofia Silva | 160h | 160h |
| 2 | 2 | Estudio de la placa |  | 11d? | 2009-08-24 A | 2009-09-07 A |  | 100% |  |  | start no earlier than 2009-08-24 |  | Juan Brenes; Sofia Silva | 176h | 176h |
| 3 | 3 | Definición del Formato de Documentos |  | 3d? | 2009-08-24 A | 2009-08-26 A |  | 100% |  |  | start no earlier than 2009-08-24 |  | Juan Brenes; Sofia Silva | 48h | 48h |
| 4 | 4 | Desarrollo del plan de proyecto |  | 11d? | 2009-08-26 A | 2009-09-09 A | 1 | 100% |  |  | finish no later than 2009-09-09 |  | Juan Brenes; Sofia Silva | 176h | 176h |
| 5 | 5 | **Compilación e instalación de linux** |  | 17d? | 2009-08-28 A | 2009-09-21 A |  | 100% |  |  |  |  | Juan Brenes | 136h | 136h |
| 6 | 5.1 | Obtención de los fuentes |  | 5d? | 2009-08-28 A | 2009-09-03 A |  | 100% |  |  | start no earlier than 2009-08-28 |  |  |  |  |
| 7 | 5.2 | Compilación |  | 5d? | 2009-09-04 A | 2009-09-10 A | 6 | 100% |  |  | start no earlier than 2009-09-04 |  |  |  |  |
| 8 | 5.3 | Instalación en la placa |  | 7d? | 2009-09-11 A | 2009-09-21 A | 7 | 100% |  |  | start no earlier than 2009-09-11 |  |  |  |  |
| 9 | 6 | **Instalacion y Configuracion de Otros Programas y Servidores en Linux** |  | 9d? | 2009-09-22 A | 2009-10-02 A | 5 | 100% |  |  |  |  | Juan Brenes; Sofia Silva | 144h | 144h |
| 10 | 6.1 | Determinación de herramientas a utilizar |  | 3d? | 2009-09-22 A | 2009-09-24 A |  | 100% |  |  | start no earlier than 2009-09-22 |  |  |  |  |
| 11 | 6.2 | Obtención de los instaladores |  | 1d? | 2009-09-25 A | 2009-09-25 A | 10 | 100% |  |  | finish no earlier than 2009-09-25 |  |  |  |  |
| 12 | 6.3 | Instalación en la placa |  | 5d? | 2009-09-28 A | 2009-10-02 A | 11 | 100% |  |  | finish no earlier than 2009-10-02 |  |  |  |  |
| 13 | 7 | Diseño y construcción del móvil |  | 42d? | 2009-09-18 A | 2009-11-16 |  | 50% | 21d? | 85d | finish no earlier than 2009-11-16 |  | Sofia Silva | 336h | 168h |
| 14 | 8 | **Implementación Módulo de Movimiento** |  | 53d? | 2009-09-15 A | 2009-11-26 |  | 62% | 19.94d? | 7d |  |  | Sofia Silva | 424h | 161.28h |
| 15 | 8.1 | Estudio del módulo PWM |  | 11d? | 2009-09-15 A | 2009-09-29 A |  | 100% |  |  | finish no earlier than 2009-09-29 |  |  |  |  |
| 16 | 8.2 | Desarrollo del código |  | 11d? | 2009-09-22 A | 2009-10-06 A |  | 100% |  |  | finish no earlier than 2009-10-06 |  |  |  |  |
| 17 | 8.3 | Testeo del módulo de movimiento |  | 37d? | 2009-10-07 A | 2009-11-26 | 16 | 40% | 22.2d? | 7d | finish no earlier than 2009-11-26 |  |  |  |  |
| 18 | 9 | Primera Revisión | milestone | 1d? | 2009-09-30 | 2009-09-30 |  |  |  | 0d | must start on 2009-09-30 |  |  |  |  |
| 19 | 10 | **Implementación Módulo Comunicación PIC - Placa Desarrollo** |  | 27d? | 2009-10-01 A | 2009-11-06 |  | 58% | 11.24d? | 21d |  |  | Juan Brenes | 216h | 21.97h |
| 20 | 10.1 | Investigación de los protocolos del puerto de expansión |  | 6d? | 2009-10-01 A | 2009-10-08 A |  | 100% |  |  | finish no earlier than 2009-10-08 |  |  |  |  |
| 21 | 10.2 | Desarrollo protocolo de comunicación |  | 11d? | 2009-10-09 A | 2009-10-23 | 20 | 60% | 4.4d? | 31d | start no earlier than 2009-10-09 |  |  |  |  |
| 22 | 10.3 | Integración con otros módulos |  | 10d? | 2009-10-19 A | 2009-10-30 |  | 60% | 4d? | 26d | finish no earlier than 2009-10-30 |  |  |  |  |
| 23 | 10.4 | Testeo protocolo comunicación |  | 10d? | 2009-10-26 A | 2009-11-06 |  | 30% | 7d? | 21d | finish no earlier than 2009-11-06 |  |  |  |  |
| 24 | 11 | **Implementación Módulo de Detección de Sobrevivientes** |  | 27d? | 2009-10-08 A | 2009-11-13 |  | 63% | 10.12d? | 86d |  |  | Sofia Silva | 216h | 135h |
| 25 | 11.1 | Estudio de integración de sensores de simulación de vida |  | 11d? | 2009-10-08 A | 2009-10-22 A |  | 100% |  |  | finish no earlier than 2009-10-22 |  |  |  |  |
| 26 | 11.2 | Desarrollo de código de sensor de vida |  | 10d? | 2009-10-12 A | 2009-10-23 A |  | 100% |  |  | finish no earlier than 2009-10-23 |  |  |  |  |
| 27 | 11.3 | Testeo sensor de simulación de vida |  | 15d? | 2009-10-26 A | 2009-11-13 |  | 10% | 13.5d? | 86d | finish no earlier than 2009-11-13 |  |  |  |  |

| ID | WBS | Task | Type | Duration | Start | Finish | Predecessors | Complete | Remaining | Total slack | Free slack | Constraint | Resources | Work | Actual work |
| --- | --- | --- | --- | --- | --- | --- | --- | --- | --- | --- | --- | --- | --- | --- | --- |
| 28 | 12 | **Adaptación e integración de Módulo de Detección de obstaculos** |  | 61d? | 2009-10-08 A | 2009-12-31 |  | 18% | 50.33d? | 52d |  |  | Juan Brenes; Sofia Silva | 976h | 170.8h |
| 29 | 12.1 | Estudio de integración de sensores de detección de obstáculos |  | 7d? | 2009-10-08 A | 2009-10-16 A |  | 100% |  |  |  | must finish on 2009-10-16 |  |  |  |
| 30 | 12.2 | Investigación de proyectos existentes |  | 6d? | 2009-11-09 | 2009-11-16 |  |  |  | 58d | 0d | start no earlier than 2009-11-09 |  |  |  |
| 31 | 12.3 | Adaptación del código obtenido |  | 11d? | 2009-11-17 | 2009-12-01 | 30 |  |  | 58d | 1d | start no earlier than 2009-11-17 |  |  |  |
| 32 | 12.4 | Integración con el módulo de movimiento |  | 8d? | 2009-12-03 | 2009-12-14 | 31 |  |  | 57d | 5d | finish no earlier than 2009-12-14 |  |  |  |
| 33 | 12.5 | Testeo módulo de detección de obstáculos |  | 8d? | 2009-12-22 | 2009-12-31 | 32 |  |  | 52d |  | finish no earlier than 2009-12-31 |  |  |  |
| 34 | 13 | Segunda Revisión | milestone | 1d? | 2009-11-16 | 2009-11-16 |  |  |  | 0d |  | must start on 2009-11-16 |  |  |  |
| 35 | 14 | **Implementación Módulo de Posicionamiento Global** |  | 25d? | 2009-11-16 | 2009-12-18 |  |  |  | 61d |  |  | Sofia Silva | 200h |  |
| 36 | 14.1 | Investigación de interacción con GPS |  | 6d? | 2009-11-16 | 2009-11-23 |  |  |  | 80d |  | start no earlier than 2009-11-16 |  |  |  |
| 37 | 14.2 | Desarrollo del código de posicionamiento |  | 13d? | 2009-11-18 | 2009-12-04 |  |  |  | 63d | 2d | finish no earlier than 2009-12-04 |  |  |  |
| 38 | 14.3 | Testeo módulo de posicionamiento |  | 8d? | 2009-12-09 | 2009-12-18 | 37 |  |  | 61d |  | finish no earlier than 2009-12-18 |  |  |  |
| 39 | 15 | **Comunicacion Inalámbrica** |  | 15d? | 2009-11-17 A | 2009-12-07 A |  | 100% |  |  |  |  | Juan Brenes; Sofia Silva | 240h | 240h |
| 40 | 15.1 | Obtención de los drivers del modem |  | 5d? | 2009-11-17 A | 2009-11-23 A |  | 100% |  |  |  | finish no earlier than 2009-11-23 |  |  |  |
| 41 | 15.2 | Integración del modem a la placa |  | 1d? | 2009-12-03 A | 2009-12-03 A | 40 | 100% |  |  |  | finish no earlier than 2009-12-03 |  |  |  |
| 42 | 15.3 | Testeo comunicación inalámbrica |  | 2d? | 2009-12-04 A | 2009-12-07 A | 41 | 100% |  |  |  | start no earlier than 2009-12-04 |  |  |  |
| 43 | 16 | Armado primer prototipo |  | 6d? | 2009-12-08 | 2009-12-15 | 5, 9, 14, 39, 19 |  |  | 0d |  | finish no later than 2009-12-15 | Juan Brenes; Sofia Silva | 96h |  |
| 44 | 17 | Primer Borrador Con Entrega (60%) | milestone | 1d? | 2009-12-16 | 2009-12-16 | 43 |  |  | 0d |  | must start on 2009-12-16 |  |  |  |
| 45 | 18 | **Desarrollo Interfaz Web** |  | 22d? | 2009-12-17 | 2010-01-15 | 44 |  |  | 5d |  |  | Juan Brenes | 176h |  |
| 46 | 18.1 | Diseño grafico de la interfaz web |  | 8d? | 2009-12-17 | 2009-12-28 |  |  |  | 19d |  | start no earlier than 2009-12-17 |  |  |  |
| 47 | 18.2 | Integración con módulo de comunicación |  | 16d? | 2009-12-18 | 2010-01-08 |  |  |  | 9d | 4d | finish no earlier than 2010-01-08 |  |  |  |
| 48 | 18.3 | Testeo interfaz web |  | 1d? | 2010-01-15 | 2010-01-15 | 47 |  |  | 5d |  | finish no earlier than 2010-01-15 |  |  |  |
| 49 | 19 | Instalación y Configuración del Servidor Web |  | 13d? | 2009-12-21 A | 2010-01-06 A |  | 100% |  |  |  | start no earlier than 2009-12-21 | Sofia Silva | 104h | 104h |
| 50 | 20 | **Diseño y Creación de la Base de Datos** |  | 11d? | 2010-01-08 | 2010-01-22 |  |  |  | 0d |  |  | Sofia Silva | 88h |  |
| 51 | 20.1 | Diseño de la Base de Datos |  | 2d? | 2010-01-08 | 2010-01-11 |  |  |  | 0d |  | finish no earlier than 2010-01-11 |  |  |  |
| 52 | 20.2 | Creación de la Base de Datos |  | 2d? | 2010-01-12 | 2010-01-13 | 51 |  |  | 0d |  | start no earlier than 2010-01-12 |  |  |  |
| 53 | 20.3 | Integración con la interfaz web |  | 7d? | 2010-01-14 | 2010-01-22 | 52 |  |  | 0d |  | start no earlier than 2010-01-14 |  |  |  |
| 54 | 21 | Diseño de la fuente de alimentación |  | 10d? | 2010-01-11 | 2010-01-22 |  |  |  | 36d |  | start no earlier than 2010-01-11 | Juan Brenes; Sofia Silva | 160h |  |
| 55 | 22 | Armado segundo prototipo |  | 16d? | 2010-01-25 | 2010-02-15 | 14, 45, 49, 50 |  |  | 0d |  | finish no later than 2010-02-15 | Juan Brenes; Sofia Silva | 256h |  |
| 56 | 23 | Segundo Borrador Con Entrega (100%) | milestone | 1d? | 2010-02-15 | 2010-02-15 |  |  |  | 10d | 0d | start no earlier than 2010-02-15 |  |  |  |
| 57 | 24 | Corrección del Informe final |  | 7d? | 2010-02-16 | 2010-02-24 | 56 |  |  | 10d | 0d | finish no earlier than 2010-02-24 | Juan Brenes; Sofia Silva | 112h |  |
| 58 | 25 | Presentación de Documentos Finales | milestone | 1d? | 2010-02-25 | 2010-02-25 | 57 |  |  | 10d |  | start no earlier than 2010-02-25 |  |  |  |
| 59 | 26 | Presentación de defensa |  | 1d? | 2010-03-12 | 2010-03-13 | 58 |  |  | 0d |  | finish no earlier than 2010-03-13 | Juan Brenes; Sofia Silva | 16h |  |
| 60 | 27 | Defensa del proyecto | milestone | 1d? | 2010-03-15 | 2010-03-15 | 59 |  |  | 0d |  | start no earlier than 2010-03-15 |  |  |  |
